# Red Team

Schedule from MS Project, 2025-01-27 to 2025-03-11.

## Calendars

- Standard: Mon-Fri 08:00-12:00, 13:00-17:00; Sat-Sun off. Exceptions (off unless hours are given): 2025-02-15 08:00-12:00, 13:00-17:00, 2025-02-22 08:00-12:00, 13:00-17:00.

## Resources

| Resource |
| --- |
| Alex |
| Ryan |
| Shahzaib |
| Gideon |

## Schedule

| ID | WBS | Task | Duration | Start | Finish | Predecessors | Total slack | Free slack | Constraint | Resources | Work |
| --- | --- | --- | --- | --- | --- | --- | --- | --- | --- | --- | --- |
| 1 | 1 | **Deliverable 1** | 4d | 2025-01-27 08:00 | 2025-01-30 17:00 |  | 0d |  |  | Alex | 107.17h |
| 2 | 1.1 | Executive Overview | 2h | 2025-01-27 08:00 | 2025-01-27 10:00 |  | 1.62d | 0d |  | Alex | 2h |
| 3 | 1.2 | Front Matter | 10min | 2025-01-27 08:00 | 2025-01-27 08:10 |  | 3.98d |  |  | Alex | 0.17h |
| 4 | 1.3 | Client Details | 1h | 2025-01-27 10:00 | 2025-01-27 11:00 | 2 | 1.62d |  |  | Ryan | 1h |
| 5 | 1.4 | Team Organization | 2h | 2025-01-27 10:00 | 2025-01-27 12:00 | 2 | 3.5d |  |  | Alex; Gideon; Ryan; Shahzaib | 8h |
| 6 | 1.5 | Project Plan | 2d | 2025-01-29 08:00 | 2025-01-30 17:00 | 4 | 0d |  | finish no earlier than 2025-01-30 17:00 | Alex; Gideon; Ryan; Shahzaib | 64h |
| 7 | 2 | **Deliverable 2** | 7d | 2025-01-31 08:00 | 2025-02-10 17:00 | 1 | 0d |  |  | Ryan | 234.17h |
| 8 | 2.1 | Executive Overview | 2h | 2025-01-31 08:00 | 2025-01-31 10:00 |  | 3.75d |  |  | Ryan | 2h |
| 9 | 2.2 | Front Matter | 10min | 2025-01-31 08:00 | 2025-01-31 08:10 |  | 2.98d | 1.98d |  | Ryan | 0.17h |
| 10 | 2.3 | Business Environment | 2d | 2025-01-31 08:00 | 2025-02-03 17:00 |  | 0d |  |  | Shahzaib | 16h |
| 11 | 2.4 | Business Domain Description | 1d | 2025-01-31 08:00 | 2025-01-31 17:00 |  | 4d | 0d |  | Ryan | 8h |
| 12 | 2.5 | Client Description | 1d | 2025-02-03 08:00 | 2025-02-03 17:00 | 11 | 4d |  |  | Ryan | 8h |
| 13 | 2.6 | Business Problem | 2d | 2025-02-04 08:00 | 2025-02-05 17:00 | 10 | 0d |  |  | Gideon; Shahzaib | 32h |
| 14 | 2.7 | Open Questions | 1d | 2025-02-04 08:00 | 2025-02-04 17:00 | 9, 10 | 1d |  |  | Ryan; Shahzaib | 16h |
| 15 | 2.8 | The Questionnaire | 1d | 2025-02-06 08:00 | 2025-02-06 17:00 | 8, 13, 14 | 0d |  |  | Alex; Gideon | 16h |
| 16 | 2.9 | Appendix 1 | 1d | 2025-02-07 08:00 | 2025-02-07 17:00 | 14, 15 | 0d |  |  | Alex | 8h |
| 17 | 2.10 | Appendix 2 | 1d | 2025-02-10 08:00 | 2025-02-10 17:00 | 16 | 0d |  |  | Alex; Gideon; Ryan; Shahzaib | 32h |
| 18 | 2.11 | Appendix 3 | 1d | 2025-02-10 08:00 | 2025-02-10 17:00 | 16 | 0d |  |  | Alex; Gideon; Ryan; Shahzaib | 32h |
| 19 | 2.12 | **Documentation** | 0.06d | 2025-01-31 08:00 | 2025-01-31 08:30 |  | 6.94d |  |  | Alex; Gideon; Ryan; Shahzaib | 8h |
| 20 | 2.12.1 | References | 30min | 2025-01-31 08:00 | 2025-01-31 08:30 |  | 5.94d |  |  | Alex; Gideon; Ryan; Shahzaib | 2h |
| 21 | 2.12.2 | Bibliography | 30min | 2025-01-31 08:00 | 2025-01-31 08:30 |  | 5.94d |  |  | Alex; Gideon; Ryan; Shahzaib | 2h |
| 22 | 2.12.3 | Spelling | 30min | 2025-01-31 08:00 | 2025-01-31 08:30 |  | 5.94d |  |  | Alex; Gideon; Ryan; Shahzaib | 2h |
| 23 | 3 | **Deliverable 3** | 7.25d | 2025-02-11 08:00 | 2025-02-19 10:00 | 7 | 0d |  |  | Gideon | 146.17h |
| 24 | 3.1 | Executive Overview | 2h | 2025-02-11 08:00 | 2025-02-11 10:00 |  | 0d |  |  | Gideon | 2h |
| 25 | 3.2 | Front Matter | 10min | 2025-02-11 08:00 | 2025-02-11 08:10 |  | 4.23d |  |  | Gideon | 0.17h |
| 26 | 3.3 | Summary Description | 1d | 2025-02-11 08:00 | 2025-02-11 17:00 |  | 0.25d |  |  | Ryan | 8h |
| 27 | 3.4 | Business Problem | 1d | 2025-02-11 10:00 | 2025-02-12 10:00 | 24 | 0d |  |  | Alex | 8h |
| 28 | 3.5 | Narrative Description | 2d | 2025-02-12 10:00 | 2025-02-14 10:00 | 26, 27 | 0d |  |  | Alex | 16h |
| 29 | 3.6 | Appendix 1 | 1d | 2025-02-14 10:00 | 2025-02-15 10:00 | 28 | 0d |  |  | Ryan | 8h |
| 30 | 3.7 | Appendix 2 | 2d | 2025-02-15 10:00 | 2025-02-18 10:00 | 25, 29 | 0d |  |  | Ryan | 16h |
| 31 | 3.8 | Appendix 3 | 1d | 2025-02-18 10:00 | 2025-02-19 10:00 | 29, 30 | 0d |  | finish no earlier than 2025-02-17 17:00 | Ryan | 8h |
| 32 | 3.9 | Appendix 4 | 0.5d | 2025-02-18 10:00 | 2025-02-18 15:00 | 29, 30 | 0.5d |  |  | Gideon; Shahzaib | 8h |
| 33 | 3.10 | Appendix 5 | 1d | 2025-02-14 10:00 | 2025-02-15 10:00 | 27, 28 | 3d |  |  | Ryan | 8h |

Notes:
- 16: Describe all user stories in your project. Print out the detailed contents of the / Product Backlog
- 17: Create one story test for each user story in Appendix 1 and transcriptionsof all / user story tests. Tests will use Gherkin syntax for all the scenarios (Given When Then).
- 18: User story map Explain your choice of tool for representing the story map (5 / marks). Printout of the Story Map (5 marks). Make sure to include references in your list of user / stories.If you are not including all the stories in Appendix 1, or if they are different, explain why.
- 29: A Flowchart system diagram for the entire information system.
- 30: Use Cases UML diagram.
- 31: Sequence Diagram UML diagram.
- 32: A UML Class diagram for the entire existing information system.
- 33: Copies of forms and other documents used by client. If there are very / many,then only include samples. If there already is a computer system, include screen shots.

| ID | WBS | Task | Duration | Start | Finish | Predecessors | Total slack | Free slack | Constraint | Resources | Work |
| --- | --- | --- | --- | --- | --- | --- | --- | --- | --- | --- | --- |
| 34 | 3.11 | **Documentation** | 0.06d | 2025-02-11 08:00 | 2025-02-11 08:30 |  | 7.19d |  |  | Alex; Gideon; Ryan; Shahzaib | 6h |
| 35 | 3.11.1 | References | 30min | 2025-02-11 08:00 | 2025-02-11 08:30 |  | 7.19d |  |  | Alex; Gideon; Ryan; Shahzaib | 2h |
| 36 | 3.11.2 | Spelling | 30min | 2025-02-11 08:00 | 2025-02-11 08:30 |  | 7.19d |  |  | Alex; Gideon; Ryan; Shahzaib | 2h |
| 37 | 4 | **Deliverable 4** | 6.38d | 2025-02-19 10:00 | 2025-02-26 14:00 | 23 | 0d |  |  | Alex | 204.17h |
| 38 | 4.1 | Executive Overview | 3h | 2025-02-19 10:00 | 2025-02-19 14:00 |  | 0d |  |  | Ryan | 3h |
| 39 | 4.2 | Front Matter | 10min | 2025-02-19 10:00 | 2025-02-19 10:10 |  | 3.35d | 0d |  | Ryan | 0.17h |
| 40 | 4.3 | Business Problem | 1d | 2025-02-19 10:10 | 2025-02-20 10:10 | 39 | 3.35d | 1.35d |  | Gideon | 8h |
| 41 | 4.4 | 10 Usability Guidelines | 2d | 2025-02-19 10:00 | 2025-02-21 10:00 |  | 0.38d |  |  | Alex; Ryan | 32h |
| 42 | 4.5 | Prototypes | 2d | 2025-02-19 14:00 | 2025-02-21 14:00 | 38 | 0d |  |  | Ryan | 16h |
| 43 | 4.6 | Client Comments | 1d | 2025-02-21 14:00 | 2025-02-22 14:00 | 40, 42 | 2d | 0d |  | Ryan | 8h |
| 44 | 4.7 | Prototype Modifications | 3d | 2025-02-21 14:00 | 2025-02-25 14:00 | 41, 42 | 0d |  | finish no earlier than 2025-02-19 17:00 | Alex; Ryan | 48h |
| 45 | 4.8 | Appendix 1 | 1d | 2025-02-25 14:00 | 2025-02-26 14:00 | 44 | 0d |  | finish no earlier than 2025-02-21 17:00 | Gideon; Shahzaib | 16h |
| 46 | 4.9 | Appendix 2 | 1d | 2025-02-22 14:00 | 2025-02-24 14:00 | 43 | 2d |  | finish no earlier than 2025-02-22 17:00 | Gideon; Shahzaib | 16h |
| 47 | 4.10 | **Documentation** | 0.06d | 2025-02-19 10:00 | 2025-02-19 10:30 |  | 6.31d |  |  | Alex; Gideon; Ryan; Shahzaib | 6h |
| 48 | 4.10.1 | References | 30min | 2025-02-19 10:00 | 2025-02-19 10:30 |  | 6.31d |  |  | Alex; Gideon; Ryan; Shahzaib | 2h |
| 49 | 4.10.2 | Spelling | 30min | 2025-02-19 10:00 | 2025-02-19 10:30 |  | 6.31d |  |  | Alex; Gideon; Ryan; Shahzaib | 2h |
| 50 | 5 | **Deliverable 5** | 3.25d | 2025-02-26 14:00 | 2025-03-03 16:00 | 37 | 0d |  |  | Shahzaib | 83.17h |
| 51 | 5.1 | Executive Overview | 2h | 2025-02-26 14:00 | 2025-02-26 16:00 |  | 0d |  |  | Shahzaib | 2h |
| 52 | 5.2 | Front Matter | 10min | 2025-02-26 14:00 | 2025-02-26 14:10 |  | 1.23d |  |  | Shahzaib | 0.17h |
| 53 | 5.3 | Business Problem | 3h | 2025-02-26 14:00 | 2025-02-26 17:00 |  | 0.88d |  |  | Gideon | 3h |
| 54 | 5.4 | Narrative Description | 2h | 2025-02-26 16:00 | 2025-02-27 09:00 | 51 | 0d |  |  | Gideon; Shahzaib | 4h |
| 55 | 5.5 | Appendix 1 | 6h | 2025-02-27 09:00 | 2025-02-27 16:00 | 54 | 0d |  |  | Gideon; Shahzaib | 12h |
| 56 | 5.6 | Appendix 2 | 1d | 2025-02-27 16:00 | 2025-02-28 16:00 | 52, 53, 55 | 0d |  |  | Gideon; Shahzaib | 16h |
| 57 | 5.7 | Appendix 3 | 1d | 2025-02-28 16:00 | 2025-03-03 16:00 | 54, 56 | 0d |  |  | Gideon; Shahzaib | 16h |

Notes:
- 45: Revised User stories and tests indicate what has changed, plus any new / userstories
- 46: Revised story map indicate what has changed.
- 55: Create a data dictionary, complete with entities, relations and attribute types.
- 56: Using MS Visio or Draw.IO, produce an ER diagram of the database / supporting the information system, complete with cardinalities (5 marks). Reproduce the class / diagram from the 3rd deliverable and explain how and why your ER diagram is both similar to, and / different from, the classdiagram in Appendix 5 of the 3rd deliverable (10 marks).
- 57: Descriptions and explanations of query optimization in your design. There are / going to be many queries. Do you need tooptimize them? If so, why and how? If not, why not? / Normalization DB classes for Appendix

| ID | WBS | Task | Duration | Start | Finish | Predecessors | Total slack | Free slack | Resources | Work |
| --- | --- | --- | --- | --- | --- | --- | --- | --- | --- | --- |
| 58 | 5.8 | **Documentation** | 0.06d | 2025-02-26 14:00 | 2025-02-26 14:30 |  | 3.19d |  |  | 4h |
| 59 | 5.8.1 | References | 30min | 2025-02-26 14:00 | 2025-02-26 14:30 |  | 3.19d |  | Alex; Gideon; Ryan; Shahzaib | 2h |
| 60 | 5.8.2 | Spelling | 30min | 2025-02-26 14:00 | 2025-02-26 14:30 |  | 3.19d |  | Alex; Gideon; Ryan; Shahzaib | 2h |
| 61 | 6 | **Deliverable 6** | 5.88d | 2025-03-03 16:00 | 2025-03-11 15:00 | 50 | 0d |  | Ryan | 150.67h |
| 62 | 6.1 | Executive Overview | 1.5h | 2025-03-03 16:00 | 2025-03-04 08:30 |  | 0.06d | 0d | Ryan | 1.5h |
| 63 | 6.2 | Front Matter | 10min | 2025-03-03 16:00 | 2025-03-03 16:10 |  | 0.23d |  | Ryan | 0.17h |
| 64 | 6.3 | Summary Description | 2h | 2025-03-03 16:00 | 2025-03-04 09:00 |  | 0d |  | Ryan | 2h |
| 65 | 6.4 | Revised Summary Narrative | 3h | 2025-03-04 09:00 | 2025-03-04 12:00 | 63, 64 | 0d |  | Alex | 3h |
| 66 | 6.5 | Client Comments | 3h | 2025-03-04 08:30 | 2025-03-04 11:30 | 62 | 0.06d |  | Ryan | 3h |
| 67 | 6.6 | Decisions Meeting | 1d | 2025-03-04 13:00 | 2025-03-05 12:00 | 65, 66 | 0d |  | Ryan | 8h |
| 68 | 6.7 | Security Measures | 2h | 2025-03-05 13:00 | 2025-03-05 15:00 | 67 | 0d |  | Alex; Ryan | 4h |
| 69 | 6.8 | Future Work | 3h | 2025-03-05 15:00 | 2025-03-06 09:00 | 68 | 3.62d |  | Alex; Gideon; Ryan; Shahzaib | 12h |
| 70 | 6.9 | Appendix 1 | 2d | 2025-03-05 15:00 | 2025-03-07 15:00 | 68 | 0d |  | Alex | 16h |
| 71 | 6.10 | Appendix 2 | 2d | 2025-03-07 15:00 | 2025-03-11 15:00 | 70 | 0d |  | Gideon; Shahzaib | 32h |
| 72 | 6.11 | Appendix 3 | 2d | 2025-03-07 15:00 | 2025-03-11 15:00 | 70 | 0d |  | Alex | 16h |
| 73 | 6.12 | **Documentation** | 0.06d | 2025-03-03 16:00 | 2025-03-03 16:30 |  | 5.81d |  | Alex; Gideon; Ryan; Shahzaib | 6h |
| 74 | 6.12.1 | References | 30min | 2025-03-03 16:00 | 2025-03-03 16:30 |  | 5.81d |  | Alex; Gideon; Ryan; Shahzaib | 2h |
| 75 | 6.12.2 | Spelling | 30min | 2025-03-03 16:00 | 2025-03-03 16:30 |  | 5.81d |  | Alex; Gideon; Ryan; Shahzaib | 2h |

Notes:
- 70: Revised user interface indicates what changed from the prototype to / theimplementation, and why. Use printed screen images to highlight the changes.
- 71: PDF version of the user guide. This should be written from the users pointof / view; that is, start with the task that the user wishes to perform, and then explain how to do it.
- 72: List with screen images showing which parts of the interface implement / whichUser stories.
